# GanttChart

Schedule from MS Project, 2013-08-07 to 2013-12-09, costs in $, A marks actual dates.

## Calendars

- Standard: Mon-Fri 08:00-12:00, 13:00-17:00; Sat-Sun off. Exceptions (off unless hours are given): 2013-10-26 08:00-12:00, 13:00-17:00, 2013-12-07 to 2013-12-08 08:00-12:00, 13:00-17:00.

## Resources

| Resource | Rate |
| --- | --- |
| Nelián Colón | 26.44 |
| Samuel Rodríguez | 21.63 |
| Daniel Santiago | 21.63 |

## Schedule

| ID | WBS | Task | Type | Duration | Start | Finish | Predecessors | Complete | Remaining | Total slack | Constraint | Deadline | Resources | Work | Actual work | Cost | Actual cost |
| --- | --- | --- | --- | --- | --- | --- | --- | --- | --- | --- | --- | --- | --- | --- | --- | --- | --- |
| 1 | 1 | **Panda Code Reviews** |  | 92d | 2013-08-07 A | 2013-12-09 |  | 70% | 27.4d | 0d |  | 2013-12-09 |  | 838.91h | 617.36h | 19,433.24 | 14,429.63 |
| 2 | 1.1 | **System Specification** |  | 5d | 2013-08-07 A | 2013-08-13 A |  | 100% |  |  |  |  |  | 120h | 120h | 2,788 | 2,788 |
| 3 | 1.1.1 | Definition of Needs |  | 1d | 2013-08-07 A | 2013-08-07 A |  | 100% |  |  |  |  | Daniel Santiago [50%]; Nelián Colón [50%]; Samuel Rodríguez [50%] | 24h | 24h | 557.6 | 557.6 |
| 4 | 1.1.2 | Concept Development |  | 1d | 2013-08-08 A | 2013-08-08 A | 3 | 100% |  |  |  |  | Daniel Santiago [50%]; Nelián Colón [50%]; Samuel Rodríguez [50%] | 24h | 24h | 557.6 | 557.6 |
| 5 | 1.1.3 | Analysis of Alternatives |  | 1d | 2013-08-09 A | 2013-08-09 A | 4 | 100% |  |  |  |  | Daniel Santiago [50%]; Nelián Colón [50%]; Samuel Rodríguez [50%] | 24h | 24h | 557.6 | 557.6 |
| 6 | 1.1.4 | System requirements Assessment |  | 1d | 2013-08-12 A | 2013-08-12 A | 5 | 100% |  |  |  |  | Daniel Santiago [50%]; Nelián Colón [50%]; Samuel Rodríguez [50%] | 24h | 24h | 557.6 | 557.6 |
| 7 | 1.1.5 | Specs Document Elaboration |  | 1d | 2013-08-13 A | 2013-08-13 A | 6 | 100% |  |  |  |  | Daniel Santiago [50%]; Nelián Colón [50%]; Samuel Rodríguez [50%] | 24h | 24h | 557.6 | 557.6 |
| 8 | 1.2 | **Proposal Development** |  | 13d | 2013-08-13 A | 2013-08-30 A | 2 | 100% |  |  |  | 2013-08-30 |  | 104h | 104h | 2,441.92 | 2,441.92 |
| 9 | 1.2.1 | Objectives | milestone | 0d | 2013-08-13 A | 2013-08-13 A | 7 | 100% |  |  |  |  | Samuel Rodríguez [50%] |  |  |  |  |
| 10 | 1.2.2 | Problem Statement |  | 1d | 2013-08-14 A | 2013-08-14 A | 9 | 100% |  |  |  |  | Samuel Rodríguez [50%] | 8h | 8h | 173.04 | 173.04 |
| 11 | 1.2.3 | Project Antecedents |  | 1d | 2013-08-14 A | 2013-08-14 A | 9 | 100% |  |  |  |  | Nelián Colón [50%] | 8h | 8h | 211.52 | 211.52 |
| 12 | 1.2.4 | General Approach |  | 1d | 2013-08-15 A | 2013-08-15 A | 11 | 100% |  |  |  |  | Nelián Colón [50%] | 8h | 8h | 211.52 | 211.52 |
| 13 | 1.2.5 | Personnel Workload Distribution |  | 1d | 2013-08-16 A | 2013-08-16 A | 12 | 100% |  |  |  |  | Nelián Colón [50%] | 8h | 8h | 211.52 | 211.52 |
| 14 | 1.2.6 | Budget |  | 1d | 2013-08-15 A | 2013-08-15 A | 10 | 100% |  |  |  |  | Samuel Rodríguez [50%] | 8h | 8h | 173.04 | 173.04 |
| 15 | 1.2.7 | Assessment Methods |  | 1d | 2013-08-20 A | 2013-08-20 A | 13 | 100% |  |  |  |  | Nelián Colón [50%] | 8h | 8h | 211.52 | 211.52 |
| 16 | 1.2.8 | Impact |  | 1d | 2013-08-14 A | 2013-08-14 A | 9 | 100% |  |  |  |  | Daniel Santiago [50%] | 8h | 8h | 173.04 | 173.04 |
| 17 | 1.2.9 | Market Overview |  | 1d | 2013-08-15 A | 2013-08-15 A | 11 | 100% |  |  |  |  | Daniel Santiago [50%] | 8h | 8h | 173.04 | 173.04 |
| 18 | 1.2.10 | Risk Management |  | 1d | 2013-08-16 A | 2013-08-16 A | 17 | 100% |  |  |  |  | Daniel Santiago [50%] | 8h | 8h | 173.04 | 173.04 |
| 19 | 1.2.11 | Executive Summary |  | 1d | 2013-08-21 A | 2013-08-21 A | 9, 10, 11, 12, 13, 14, 15, 16, 17, 18 | 100% |  |  |  |  | Samuel Rodríguez [50%] | 8h | 8h | 173.04 | 173.04 |
| 20 | 1.2.12 | First Draft Review |  | 1d | 2013-08-30 A | 2013-08-30 A | 19 | 100% |  |  |  |  | Daniel Santiago [50%]; Nelián Colón [50%]; Samuel Rodríguez [50%] | 24h | 24h | 557.6 | 557.6 |
| 21 | 1.3 | Final Proposal Review and Acceptance | milestone | 10d | 2013-09-02 A | 2013-09-13 A | 20 | 100% |  |  | finish no earlier than 2013-09-13 |  | Daniel Santiago [50%]; Nelián Colón [50%]; Samuel Rodríguez [50%] | 120h | 120h | 2,788 | 2,788 |
| 22 | 1.4 | Proposal Presentation |  | 1d | 2013-09-09 A | 2013-09-09 A | 21 | 100% |  |  |  |  | Daniel Santiago [50%]; Nelián Colón [50%]; Samuel Rodríguez [50%] | 24h | 24h | 557.6 | 557.6 |
| 23 | 1.5 | **System Design** |  | 14d | 2013-09-11 A | 2013-09-30 A | 22 | 100% |  |  |  | 2013-09-30 |  | 66.43h | 66.43h | 1,512.46 | 1,512.46 |
| 24 | 1.5.1 | **Software Design** |  | 14d | 2013-09-11 A | 2013-09-30 A | 22 | 100% |  |  |  | 2013-09-30 |  | 66.43h | 66.43h | 1,512.46 | 1,512.46 |
| 25 | 1.5.1.1 | Use Case Diagrams |  | 2d | 2013-09-11 A | 2013-09-12 A | 22 | 100% |  |  |  |  | Nelián Colón [15%] | 2.57h | 2.57h | 67.95 | 67.95 |
| 26 | 1.5.1.2 | Use Case Descriptions |  | 2d | 2013-09-13 A | 2013-09-16 A | 25 | 100% |  |  |  |  | Nelián Colón [15%] | 2.57h | 2.57h | 67.97 | 67.97 |
| 27 | 1.5.1.3 | Sequential Diagrams |  | 2d | 2013-09-17 A | 2013-09-18 A | 26 | 100% |  |  |  |  | Nelián Colón [15%] | 2.57h | 2.57h | 67.95 | 67.95 |
| 28 | 1.5.1.4 | Class Diagrams |  | 1d | 2013-09-17 A | 2013-09-17 A | 27 | 100% |  |  |  |  | Daniel Santiago [50%] | 4h | 4h | 86.52 | 86.52 |
| 29 | 1.5.1.5 | Flow Charts |  | 1d | 2013-09-20 A | 2013-09-20 A | 28 | 100% |  |  |  |  | Daniel Santiago [40%]; Samuel Rodríguez [40%] | 6.72h | 6.72h | 145.35 | 145.35 |

| ID | WBS | Task | Duration | Start | Finish | Predecessors | Complete | Remaining | Total slack | Free slack | Deadline | Resources | Work | Actual work | Cost | Actual cost |
| --- | --- | --- | --- | --- | --- | --- | --- | --- | --- | --- | --- | --- | --- | --- | --- | --- |
| 30 | 1.5.1.6 | **Front End** | 6d | 2013-09-23 A | 2013-09-30 A | 28, 25, 26, 27, 29 | 100% |  |  |  | 2013-09-30 |  | 24h | 24h | 519.12 | 519.12 |
| 31 | 1.5.1.6.1 | Student Views | 3d | 2013-09-23 A | 2013-09-25 A | 28, 25, 26, 27, 29 | 100% |  |  |  |  | Samuel Rodríguez [50%] | 12h | 12h | 259.56 | 259.56 |
| 32 | 1.5.1.6.2 | Professor Views | 3d | 2013-09-26 A | 2013-09-30 A | 31 | 100% |  |  |  |  | Samuel Rodríguez [50%] | 12h | 12h | 259.56 | 259.56 |
| 33 | 1.5.1.7 | **Back End** | 4d | 2013-09-24 A | 2013-09-27 A | 28, 25, 26, 27, 29 | 100% |  |  |  | 2013-09-30 |  | 16h | 16h | 346.08 | 346.08 |
| 34 | 1.5.1.7.1 | Sandboxed Prototype | 2d | 2013-09-24 A | 2013-09-26 A | 28, 25, 26, 27, 29 | 100% |  |  |  |  | Daniel Santiago [50%] | 8h | 8h | 173.04 | 173.04 |
| 35 | 1.5.1.7.2 | REST API documentation | 1d | 2013-09-25 A | 2013-09-25 A | 34 | 100% |  |  |  |  | Daniel Santiago [50%] | 4h | 4h | 86.52 | 86.52 |
| 36 | 1.5.1.7.3 | Queries Structure | 1d | 2013-09-27 A | 2013-09-27 A | 35 | 100% |  |  |  |  | Daniel Santiago [50%] | 4h | 4h | 86.52 | 86.52 |
| 37 | 1.5.1.8 | **Account and Repositories Manager** | 2d | 2013-09-24 A | 2013-09-25 A | 28, 25, 26, 27, 29 | 100% |  |  |  | 2013-09-30 |  | 8h | 8h | 211.52 | 211.52 |
| 38 | 1.5.1.8.1 | Repositories Management | 2d | 2013-09-24 A | 2013-09-25 A | 28, 25, 26, 27, 29 | 100% |  |  |  |  | Nelián Colón [50%] | 8h | 8h | 211.52 | 211.52 |
| 39 | 1.6 | **Implementation** | 27d | 2013-10-01 A | 2013-11-05 | 23 | 70% | 8.02d | 0d |  | 2013-11-05 |  | 224.48h | 182.93h | 5,240.22 | 4,341.65 |
| 40 | 1.6.1 | **Front End** | 25d | 2013-10-01 A | 2013-11-01 | 30 | 24% | 19.1d | 0d |  |  |  | 40.48h | 6.93h | 875.5 | 149.97 |
| 41 | 1.6.1.1 | Student Views | 13d | 2013-10-01 A | 2013-10-17 | 30 | 40% | 7.8d | 0.8d | 0d |  | Samuel Rodríguez [50%]; Nelián Colón | 4.88h | 4.13h | 105.47 | 89.4 |
| 42 | 1.6.1.2 | Professor Views | 7d | 2013-10-18 A | 2013-10-26 | 41 | 10% | 6.3d | 0d |  |  | Samuel Rodríguez [50%]; Nelián Colón | 15.6h | 2.8h | 337.43 | 60.56 |
| 43 | 1.6.1.3 | Administrator Views | 5d | 2013-10-28 | 2013-11-01 | 42 |  |  | 0d |  |  | Samuel Rodríguez [50%] | 20h |  | 432.6 |  |
| 44 | 1.6.2 | **Back End** | 21.4d | 2013-10-01 A | 2013-10-29 A | 33 | 100% |  |  |  | 2013-11-06 |  | 76h | 76h | 1,643.88 | 1,643.88 |
| 45 | 1.6.2.1 | Data Base | 6d | 2013-10-01 A | 2013-10-08 A | 33 | 100% |  |  |  |  | Daniel Santiago [50%] | 24h | 24h | 519.12 | 519.12 |
| 46 | 1.6.2.2 | Back End Server | 4d | 2013-10-09 A | 2013-10-15 A | 45 | 100% |  |  |  |  | Daniel Santiago [50%] | 16h | 16h | 346.08 | 346.08 |
| 47 | 1.6.2.3 | Testing Framework | 5d | 2013-10-16 A | 2013-10-23 A | 46 | 100% |  |  |  |  | Daniel Santiago [50%] | 20h | 20h | 432.6 | 432.6 |
| 48 | 1.6.2.4 | REST API | 4d | 2013-10-23 A | 2013-10-29 A | 47 | 100% |  |  |  |  | Daniel Santiago [50%] | 16h | 16h | 346.08 | 346.08 |
| 49 | 1.6.3 | **Accounts and Repositories Manager** | 16d | 2013-10-01 A | 2013-10-22 A | 23 | 100% |  |  |  |  |  | 64h | 64h | 1,692.16 | 1,692.16 |
| 50 | 1.6.3.1 | Repository Manager | 7d | 2013-10-01 A | 2013-10-09 A | 37 | 100% |  |  |  |  | Nelián Colón [50%] | 28h | 28h | 740.32 | 740.32 |
| 51 | 1.6.3.2 | Accounts and Repositories Controllers | 7d | 2013-10-10 A | 2013-10-18 A | 50 | 100% |  |  |  |  | Nelián Colón [50%] | 28h | 28h | 740.32 | 740.32 |
| 52 | 1.6.3.3 | Email Exchange System | 2d | 2013-10-21 A | 2013-10-22 A | 51, 50 | 100% |  |  |  |  | Nelián Colón [50%] | 8h | 8h | 211.52 | 211.52 |
| 53 | 1.6.4 | **Unit Testing** | 8.6d | 2013-10-25 A | 2013-11-05 | 44 | 82% | 1.56d | 0d |  | 2013-11-06 |  | 44h | 36h | 1,028.68 | 855.64 |
| 54 | 1.6.4.1 | Front End Testing | 2d | 2013-11-04 | 2013-11-05 | 40 |  |  | 0d |  |  | Samuel Rodríguez [50%] | 8h |  | 173.04 |  |
| 55 | 1.6.4.2 | Back End Testing | 5d | 2013-10-30 A | 2013-11-05 A | 45, 46, 47, 48 | 100% |  |  |  |  | Daniel Santiago [50%] | 20h | 20h | 432.6 | 432.6 |
| 56 | 1.6.4.3 | Account and Repositories Testing | 4d | 2013-10-25 A | 2013-10-31 A | 49 | 100% |  |  |  |  | Nelián Colón [50%] | 16h | 16h | 423.04 | 423.04 |

| ID | WBS | Task | Type | Duration | Start | Finish | Predecessors | Total slack | Free slack | Constraint | Deadline | Resources | Work | Cost |
| --- | --- | --- | --- | --- | --- | --- | --- | --- | --- | --- | --- | --- | --- | --- |
| 57 | 1.7 | **System Integration** |  | 10d | 2013-11-05 | 2013-11-19 | 53 | 1d | 0d |  | 2013-11-20 |  | 84h | 1,874.64 |
| 58 | 1.7.1 | Integration of Front End with Back End |  | 5d | 2013-11-06 | 2013-11-12 | 54, 55 | 1d | 0d |  |  | Daniel Santiago [50%]; Samuel Rodríguez [50%] | 24h | 519.12 |
| 59 | 1.7.2 | Integration of Back End with Account and Repositories Manager |  | 2d | 2013-11-05 | 2013-11-07 | 55, 56 | 3d |  |  |  | Daniel Santiago [50%]; Nelián Colón [50%] | 8h | 173.04 |
| 60 | 1.7.3 | Full Integration | milestone | 3d | 2013-11-13 | 2013-11-15 | 58, 59 | 1d | 0d |  |  | Daniel Santiago [50%]; Nelián Colón [50%]; Samuel Rodríguez [50%] | 36h | 836.4 |
| 61 | 1.7.4 | Integration Testing |  | 2d | 2013-11-15 | 2013-11-19 | 60 | 1d | 0d |  |  | Daniel Santiago [50%]; Nelián Colón [50%]; Samuel Rodríguez [50%] | 16h | 346.08 |
| 62 | 1.8 | **Delivery** |  | 16d | 2013-11-20 | 2013-12-09 | 57 | 0d |  |  | 2013-12-09 |  | 96h | 2,230.4 |
| 63 | 1.8.1 | Final Deployment | milestone | 2d | 2013-11-20 | 2013-11-21 | 61 | 6d |  | finish no later than 2013-12-01 |  | Daniel Santiago [50%]; Nelián Colón [50%]; Samuel Rodríguez [50%] | 24h | 557.6 |
| 64 | 1.8.2 | System Demo | milestone | 1d | 2013-12-02 | 2013-12-02 | 63 | 0d |  | start no earlier than 2013-12-02 | 2013-12-02 | Daniel Santiago [50%]; Nelián Colón [50%]; Samuel Rodríguez [50%] | 12h | 278.8 |
| 65 | 1.8.3 | Final Report | milestone | 5d | 2013-12-05 | 2013-12-09 | 64 | 0d |  | finish no earlier than 2013-12-09 |  | Daniel Santiago [50%]; Nelián Colón [50%]; Samuel Rodríguez [50%] | 60h | 1,394 |
