# GanttChart

Schedule from MS Project, 2013-08-07 to 2013-12-09, costs in $, A marks actual dates.

## Calendars

- Standard: Mon-Fri 08:00-12:00, 13:00-17:00; Sat-Sun off. Exceptions (off unless hours are given): 2013-10-26 08:00-12:00, 13:00-17:00, 2013-12-07 to 2013-12-08 08:00-12:00, 13:00-17:00.

## Resources

| Resource | Rate |
| --- | --- |
| Nelián Colón | 26.44 |
| Samuel Rodríguez | 21.63 |
| Daniel Santiago | 21.63 |

## Schedule

| ID | WBS | Task | Type | Duration | Start | Finish | Predecessors | Complete | Remaining | Total slack | Free slack | Deadline | Resources | Work | Actual work | Cost | Actual cost |
| --- | --- | --- | --- | --- | --- | --- | --- | --- | --- | --- | --- | --- | --- | --- | --- | --- | --- |
| 1 | 1 | **Panda Code Review** |  | 92d | 2013-08-07 A | 2013-12-09 |  | 12% | 81.1d | 0d |  | 2013-12-09 |  | 1496h | 224h | 34,667.28 | 5,229.92 |
| 2 | 1.1 | **System Specification** |  | 5d | 2013-08-07 A | 2013-08-13 A |  | 100% |  |  |  |  |  | 120h | 120h | 2,788 | 2,788 |
| 3 | 1.1.1 | Definition of Needs |  | 1d | 2013-08-07 A | 2013-08-07 A |  | 100% |  |  |  |  | Daniel Santiago; Nelián Colón; Samuel Rodríguez | 24h | 24h | 557.6 | 557.6 |
| 4 | 1.1.2 | Concept Development |  | 1d | 2013-08-08 A | 2013-08-08 A | 3 | 100% |  |  |  |  | Daniel Santiago; Nelián Colón; Samuel Rodríguez | 24h | 24h | 557.6 | 557.6 |
| 5 | 1.1.3 | Analysis of Alternatives |  | 1d | 2013-08-09 A | 2013-08-09 A | 4 | 100% |  |  |  |  | Daniel Santiago; Nelián Colón; Samuel Rodríguez | 24h | 24h | 557.6 | 557.6 |
| 6 | 1.1.4 | System requirements Assessment |  | 1d | 2013-08-12 A | 2013-08-12 A | 5 | 100% |  |  |  |  | Daniel Santiago; Nelián Colón; Samuel Rodríguez | 24h | 24h | 557.6 | 557.6 |
| 7 | 1.1.5 | Specs Document Elaboration |  | 1d | 2013-08-13 A | 2013-08-13 A | 6 | 100% |  |  |  |  | Daniel Santiago; Nelián Colón; Samuel Rodríguez | 24h | 24h | 557.6 | 557.6 |
| 8 | 1.2 | **Proposal Development** |  | 13d | 2013-08-13 A | 2013-08-30 A |  | 100% |  |  |  | 2013-08-30 |  | 104h | 104h | 2,441.92 | 2,441.92 |
| 9 | 1.2.1 | Objectives | milestone | 0d | 2013-08-13 A | 2013-08-13 A | 7 | 100% |  |  |  |  | Samuel Rodríguez |  |  |  |  |
| 10 | 1.2.2 | Problem Statement |  | 1d | 2013-08-14 A | 2013-08-14 A | 9 | 100% |  |  |  |  | Samuel Rodríguez | 8h | 8h | 173.04 | 173.04 |
| 11 | 1.2.3 | Project Antecedents |  | 1d | 2013-08-14 A | 2013-08-14 A | 9 | 100% |  |  |  |  | Nelián Colón | 8h | 8h | 211.52 | 211.52 |
| 12 | 1.2.4 | General Approach |  | 1d | 2013-08-15 A | 2013-08-15 A | 11 | 100% |  |  |  |  | Nelián Colón | 8h | 8h | 211.52 | 211.52 |
| 13 | 1.2.5 | Personnel Workload Distribution |  | 1d | 2013-08-16 A | 2013-08-16 A | 12 | 100% |  |  |  |  | Nelián Colón | 8h | 8h | 211.52 | 211.52 |
| 14 | 1.2.6 | Budget |  | 1d | 2013-08-15 A | 2013-08-15 A | 10 | 100% |  |  |  |  | Samuel Rodríguez | 8h | 8h | 173.04 | 173.04 |
| 15 | 1.2.7 | Assessment Methods |  | 1d | 2013-08-20 A | 2013-08-20 A | 13 | 100% |  |  |  |  | Nelián Colón | 8h | 8h | 211.52 | 211.52 |
| 16 | 1.2.8 | Impact |  | 1d | 2013-08-14 A | 2013-08-14 A | 9 | 100% |  |  |  |  | Daniel Santiago | 8h | 8h | 173.04 | 173.04 |
| 17 | 1.2.9 | Market Overview |  | 1d | 2013-08-15 A | 2013-08-15 A | 11 | 100% |  |  |  |  | Daniel Santiago | 8h | 8h | 173.04 | 173.04 |
| 18 | 1.2.10 | Risk Management |  | 1d | 2013-08-16 A | 2013-08-16 A | 17 | 100% |  |  |  |  | Daniel Santiago | 8h | 8h | 173.04 | 173.04 |
| 19 | 1.2.11 | Executive Summary | manual | 1d | 2013-08-21 A | 2013-08-21 A | 9, 10, 11, 12, 13, 14, 15, 16, 17, 18 | 100% |  |  |  |  | Samuel Rodríguez | 8h | 8h | 173.04 | 173.04 |
| 20 | 1.2.12 | First Draft Review |  | 1d | 2013-08-30 A | 2013-08-30 A | 19 | 100% |  |  |  |  | Daniel Santiago; Nelián Colón; Samuel Rodríguez | 24h | 24h | 557.6 | 557.6 |
| 21 | 1.3 | Final Proposal Review and Acceptance | milestone, manual | 3d | 2013-09-04 | 2013-09-06 | 20 |  |  |  |  |  | Daniel Santiago; Nelián Colón; Samuel Rodríguez | 72h |  | 1,672.8 |  |
| 22 | 1.4 | Proposal Presentation | manual | 2d | 2013-09-07 | 2013-09-09 | 21 |  |  |  |  |  | Daniel Santiago; Nelián Colón; Samuel Rodríguez | 48h |  | 1,115.2 |  |
| 23 | 1.5 | **System Design** |  | 13d | 2013-09-10 | 2013-09-26 | 8 |  |  | 1d |  | 2013-09-27 |  | 184h |  | 4,210.8 |  |
| 24 | 1.5.1 | **Front End Mockups** |  | 13d | 2013-09-10 | 2013-09-26 | 22 |  |  | 1d | 0d |  |  | 96h |  | 2,076.48 |  |
| 25 | 1.5.1.1 | Account Manager |  | 2d | 2013-09-10 | 2013-09-11 | 22 |  |  | 2d | 0d |  | Samuel Rodríguez | 16h |  | 346.08 |  |
| 26 | 1.5.1.2 | Repository Manager |  | 2d | 2013-09-13 | 2013-09-16 | 25 |  |  | 1d | 0d |  | Samuel Rodríguez | 16h |  | 346.08 |  |
| 27 | 1.5.1.3 | Testing Manager |  | 2d | 2013-09-17 | 2013-09-18 | 26 |  |  | 1d | 0d |  | Samuel Rodríguez | 16h |  | 346.08 |  |
| 28 | 1.5.1.4 | Source Code Viewer |  | 2d | 2013-09-19 | 2013-09-20 | 27 |  |  | 1d | 0d |  | Samuel Rodríguez | 16h |  | 346.08 |  |
| 29 | 1.5.1.5 | Source Code Annotator |  | 2d | 2013-09-23 | 2013-09-24 | 28 |  |  | 1d | 0d |  | Samuel Rodríguez | 16h |  | 346.08 |  |
| 30 | 1.5.1.6 | Grading |  | 2d | 2013-09-25 | 2013-09-26 | 29 |  |  | 1d |  |  | Samuel Rodríguez | 16h |  | 346.08 |  |

| ID | WBS | Task | Duration | Start | Finish | Predecessors | Total slack | Free slack | Deadline | Resources | Work | Cost |
| --- | --- | --- | --- | --- | --- | --- | --- | --- | --- | --- | --- | --- |
| 31 | 1.5.2 | **Back End** | 8d | 2013-09-10 | 2013-09-19 | 22 | 1d | 0d |  |  | 40h | 865.2 |
| 32 | 1.5.2.1 | Flow Charts and Diagrams | 1d | 2013-09-10 | 2013-09-10 | 22 | 1d | 0d |  | Daniel Santiago | 8h | 173.04 |
| 33 | 1.5.2.2 | Sandboxed Prototype | 1d | 2013-09-11 | 2013-09-11 | 32 | 1d | 0d |  | Daniel Santiago | 8h | 173.04 |
| 34 | 1.5.2.3 | Middleware and Routes definitions | 1d | 2013-09-17 | 2013-09-17 | 33 | 1d | 0d |  | Daniel Santiago | 8h | 173.04 |
| 35 | 1.5.2.4 | REST API documentation | 1d | 2013-09-18 | 2013-09-18 | 34 | 1d | 0d |  | Daniel Santiago | 8h | 173.04 |
| 36 | 1.5.2.5 | Queries and Data Base Structure | 1d | 2013-09-19 | 2013-09-19 | 35 | 1d |  |  | Daniel Santiago | 8h | 173.04 |
| 37 | 1.5.3 | **Account and Repositories Manager** | 6d | 2013-09-10 | 2013-09-17 | 22 | 6d | 0d |  |  | 48h | 1,269.12 |
| 38 | 1.5.3.1 | DB Queries Documentation | 3d | 2013-09-10 | 2013-09-12 | 22 | 6d | 0d |  | Nelián Colón | 24h | 634.56 |
| 39 | 1.5.3.2 | Gathering Information Documentation | 3d | 2013-09-13 | 2013-09-17 | 38 | 6d |  |  | Nelián Colón | 24h | 634.56 |
| 40 | 1.6 | **Implementation** | 27d | 2013-09-18 | 2013-10-24 |  | 1d |  | 2013-10-25 |  | 520h | 12,017.2 |
| 41 | 1.6.1 | **Front End** | 20d | 2013-09-27 | 2013-10-24 | 24 | 1d |  |  |  | 160h | 3,460.8 |
| 42 | 1.6.1.1 | Account Manager | 4d | 2013-09-27 | 2013-10-02 | 24 | 1d | 0d |  | Samuel Rodríguez | 32h | 692.16 |
| 43 | 1.6.1.2 | Repository Manager | 4d | 2013-10-03 | 2013-10-08 | 42 | 1d | 0d |  | Samuel Rodríguez | 32h | 692.16 |
| 44 | 1.6.1.3 | Testing Manager | 4d | 2013-10-09 | 2013-10-14 | 43 | 1d | 0d |  | Samuel Rodríguez | 32h | 692.16 |
| 45 | 1.6.1.4 | Source Code Viewer | 3d | 2013-10-15 | 2013-10-17 | 44 | 1d | 0d |  | Samuel Rodríguez | 24h | 519.12 |
| 46 | 1.6.1.5 | Source Code Annotation | 3d | 2013-10-18 | 2013-10-22 | 45 | 1d | 0d |  | Samuel Rodríguez | 24h | 519.12 |
| 47 | 1.6.1.6 | Grading | 2d | 2013-10-23 | 2013-10-24 | 46 | 1d |  |  | Samuel Rodríguez | 16h | 346.08 |
| 48 | 1.6.2 | **Back End** | 25d | 2013-09-20 | 2013-10-24 | 31 | 1d |  | 2013-10-25 |  | 200h | 4,326 |
| 49 | 1.6.2.1 | Data Base | 5d | 2013-09-20 | 2013-09-26 | 31 | 1d | 0d |  | Daniel Santiago | 40h | 865.2 |
| 50 | 1.6.2.2 | Back End Server | 5d | 2013-09-27 | 2013-10-03 | 49 | 1d | 0d |  | Daniel Santiago | 40h | 865.2 |
| 51 | 1.6.2.3 | Testing Framework | 5d | 2013-10-04 | 2013-10-10 | 50 | 1d | 0d |  | Daniel Santiago | 40h | 865.2 |
| 52 | 1.6.2.4 | REST API | 5d | 2013-10-11 | 2013-10-17 | 51 | 1d | 0d |  | Daniel Santiago | 40h | 865.2 |
| 53 | 1.6.2.5 | Account and Repositories Controller | 5d | 2013-10-18 | 2013-10-24 | 52 | 1d |  |  | Daniel Santiago | 40h | 865.2 |
| 54 | 1.6.3 | **Accounts and Repositories Manager** | 15d | 2013-09-18 | 2013-10-08 | 37 | 6d | 0d |  |  | 120h | 3,172.8 |
| 55 | 1.6.3.1 | Accounts to Data Base Controllers | 5d | 2013-09-18 | 2013-09-24 | 37 | 6d | 0d |  | Nelián Colón | 40h | 1,057.6 |
| 56 | 1.6.3.2 | Repository Manager | 5d | 2013-09-25 | 2013-10-01 | 55 | 6d | 0d |  | Nelián Colón | 40h | 1,057.6 |
| 57 | 1.6.3.3 | Communication with Back End Server | 5d | 2013-10-02 | 2013-10-08 | 56 | 6d |  |  | Nelián Colón | 40h | 1,057.6 |
| 58 | 1.6.4 | Payment System | 5d | 2013-10-09 | 2013-10-17 | 54 | 6d | 0d |  | Nelián Colón | 40h | 1,057.6 |

| ID | WBS | Task | Type | Duration | Start | Finish | Predecessors | Total slack | Free slack | Constraint | Deadline | Resources | Work | Cost |
| --- | --- | --- | --- | --- | --- | --- | --- | --- | --- | --- | --- | --- | --- | --- |
| 59 | 1.7 | **Unit Testing** |  | 13d | 2013-10-11 | 2013-10-28 |  | 8d |  |  |  |  | 56h | 1,326.72 |
| 60 | 1.7.1 | Front End Testing |  | 2d | 2013-10-26 | 2013-10-28 | 41 | 2d | 0d | finish no earlier than 2013-10-28 |  | Samuel Rodríguez | 16h | 346.08 |
| 61 | 1.7.2 | Back End Testing |  | 2d | 2013-10-26 | 2013-10-28 | 48 | 2d | 0d | start no earlier than 2013-10-26 |  | Daniel Santiago | 16h | 346.08 |
| 62 | 1.7.3 | Account and Repositories Testing |  | 2d | 2013-10-11 | 2013-10-14 | 54 | 15d | 14d |  |  | Nelián Colón | 16h | 423.04 |
| 63 | 1.7.4 | Payment System Testing |  | 1d | 2013-10-18 | 2013-10-18 | 58 | 15d | 13d |  |  | Nelián Colón | 8h | 211.52 |
| 64 | 1.8 | **System Integration** |  | 12d | 2013-10-29 | 2013-11-13 |  | 2d |  |  | 2013-11-15 |  | 224h | 5,191.44 |
| 65 | 1.8.1 | Integration of Front End with Back End |  | 3d | 2013-10-29 | 2013-10-31 | 60, 61 | 2d | 0d |  |  | Daniel Santiago; Samuel Rodríguez | 48h | 1,038.24 |
| 66 | 1.8.2 | Integration of Back End with Account and Repositories Manager |  | 3d | 2013-11-01 | 2013-11-05 | 61, 62, 65 | 2d | 0d |  |  | Daniel Santiago; Nelián Colón | 48h | 1,153.68 |
| 67 | 1.8.3 | Integration of Payment System |  | 1d | 2013-11-06 | 2013-11-06 | 61, 63, 66 | 2d | 0d |  |  | Nelián Colón | 8h | 211.52 |
| 68 | 1.8.4 | Full Integration | milestone | 3d | 2013-11-07 | 2013-11-11 | 65, 66, 67 | 2d | 0d |  |  | Daniel Santiago; Nelián Colón; Samuel Rodríguez | 72h | 1,672.8 |
| 69 | 1.8.5 | Integration Testing |  | 2d | 2013-11-12 | 2013-11-13 | 68 | 2d | 0d |  |  | Daniel Santiago; Nelián Colón; Samuel Rodríguez | 48h | 1,115.2 |
| 70 | 1.9 | **Delivery** |  | 20d | 2013-11-14 | 2013-12-09 |  | 0d |  |  | 2013-12-09 |  | 168h | 3,903.2 |
| 71 | 1.9.1 | Deployment in Amazon Web Servers EC2 | milestone | 1d | 2013-11-14 | 2013-11-14 | 69 | 13d | 11d |  |  | Daniel Santiago; Nelián Colón; Samuel Rodríguez | 24h | 557.6 |
| 72 | 1.9.2 | System Demo | milestone | 1d | 2013-12-02 | 2013-12-02 | 71 | 2d |  | start no earlier than 2013-12-02 |  | Daniel Santiago; Nelián Colón; Samuel Rodríguez | 24h | 557.6 |
| 73 | 1.9.3 | Final Report | milestone | 5d | 2013-12-05 | 2013-12-09 | 72 | 0d |  | finish no earlier than 2013-12-09 |  | Daniel Santiago; Nelián Colón; Samuel Rodríguez | 120h | 2,788 |
